Schedule from MS Project, 2018-09-03 to 2019-12-20, costs in R$, A marks actual dates.

## Calendars

- Padrão: Mon-Fri 09:00-12:00, 13:00-18:00; Sat-Sun off.

## Resources

| Resource | Rate |
| --- | --- |
| Kevin | 150 |
| Rodrigo | 150 |
| Cliente |  |
| Gp Externo | 200 |
| Mm |  |
| Adler | 300 |
| Lucas | 150 |
| Thiago | 150 |

## Schedule

| ID | WBS | Task | Type | Duration | Start | Finish | Predecessors | Complete | Remaining | Actual finish | Baseline start | Baseline finish | Baseline duration | Total slack | Constraint | Resources | Work | Actual work | Cost | Baseline cost | Actual cost |
| --- | --- | --- | --- | --- | --- | --- | --- | --- | --- | --- | --- | --- | --- | --- | --- | --- | --- | --- | --- | --- | --- |
| 1 | 1 | **Sistema de Integração de Serviços** |  | 26d | 2018-09-03 09:00 A | 2018-10-06 18:00 |  | 18% | 21.21d |  | 2017-05-15 09:00 | 2017-06-21 18:00 | 28d |  |  |  | 181.31h | 36.28h | 27,994.67 | 40,430 | 5,311.55 |
| 2 | 1.1 | **Prospecção** |  | 3d | 2018-09-03 09:00 A | 2018-09-05 18:00 |  | 100% |  | 2018-09-03 14:48 | 2017-05-15 09:00 | 2017-05-17 13:33 | 2.44d |  |  |  | 8.4h | 8.4h | 1,130 | 1,955 | 1,130 |
| 3 | 1.1.1 | **PTEC** |  | 1.09d | 2018-09-03 09:00 A | 2018-09-04 09:45 |  | 100% |  | 2018-09-03 11:45 | 2017-05-15 09:00 | 2017-05-16 13:45 | 1.47d |  |  |  | 4h | 4h | 600 | 1,500 | 600 |
| 4 | 1.1.1.1 | Estudar Dominio de Aplicação |  | 0.12d | 2018-09-03 09:00 A | 2018-09-03 10:00 A |  | 100% |  |  | 2017-05-15 09:00 | 2017-05-15 11:00 | 0.25d |  |  | Kevin | 1h | 1h | 150 | 300 | 150 |
| 5 | 1.1.1.2 | Reunir-se com o fornecedor de requisitos | milestone | 0d | 2018-09-03 09:00 A | 2018-09-03 09:00 A | 4 | 100% |  |  | 2017-05-15 11:00 | 2017-05-15 12:00 | 0.12d |  |  | Lucas |  |  |  | 150 |  |
| 6 | 1.1.1.3 | Redigir PTEC |  | 0.25d | 2018-09-03 09:00 A | 2018-09-03 11:00 A | 5 | 100% |  |  | 2017-05-15 13:00 | 2017-05-16 10:00 | 0.75d |  |  | Thiago | 2h | 2h | 300 | 900 | 300 |
| 7 | 1.1.1.4 | Revisar proposta Tecnica |  | 0.34d | 2018-09-03 09:00 A | 2018-09-03 11:45 A | 6 | 100% |  |  | 2017-05-16 10:00 | 2017-05-16 13:45 | 0.34d |  |  | Rodrigo | 1h | 1h | 150 | 150 | 150 |
| 8 | 1.1.1.5 | Aprovar PTEC | milestone | 0d | 2018-09-03 09:00 A | 2018-09-03 09:00 A | 7 | 100% |  |  | 2017-05-16 13:45 | 2017-05-16 13:45 | 0d |  |  | Cliente |  |  |  |  |  |
| 9 | 1.1.2 | **Es. Prel. Tam.** |  | 0.35d | 2018-09-03 09:00 A | 2018-09-03 11:48 |  | 100% |  | 2018-09-03 10:48 | 2017-05-16 13:45 | 2017-05-16 16:33 | 0.35d |  |  |  | 1.4h | 1.4h | 80 | 230 | 80 |
| 10 | 1.1.2.1 | Estimar tamanho do projeto |  | 0.12d | 2018-09-03 09:00 A | 2018-09-03 10:00 A | 7 | 100% |  |  | 2017-05-16 13:45 | 2017-05-16 14:45 | 0.12d |  |  | Thiago | 1h | 1h |  | 150 |  |
| 11 | 1.1.2.2 | Revisar estimativa de tamanho do projeto |  | 0.23d | 2018-09-03 09:00 A | 2018-09-03 10:48 A | 10 | 100% |  |  | 2017-05-16 14:45 | 2017-05-16 16:33 | 0.23d |  |  | Gp Externo | 0.4h | 0.4h | 80 | 80 | 80 |
| 12 | 1.1.3 | **Es. Prel. Cronograma e orçamento.** |  | 1d | 2018-09-03 09:00 A | 2018-09-03 18:00 |  | 100% |  | 2018-09-03 14:48 | 2017-05-16 16:33 | 2017-05-17 13:33 | 0.62d |  |  |  | 3h | 3h | 450 | 225 | 450 |
| 13 | 1.1.3.1 | Elaborar Cronograma e orçamento preliminares |  | 0.25d | 2018-09-03 09:00 A | 2018-09-03 14:48 A | 9 | 100% |  |  | 2017-05-16 16:33 | 2017-05-17 11:33 | 0.5d |  |  | Kevin | 2h | 2h | 300 | 75 | 300 |
| 14 | 1.1.3.2 | Revisar Cronograma e orçamento preliminares |  | 0.12d | 2018-09-03 09:00 A | 2018-09-03 10:00 A | 13, 10 | 100% |  |  | 2017-05-17 11:33 | 2017-05-17 13:33 | 0.12d |  |  | Lucas | 1h | 1h | 150 | 150 | 150 |
| 15 | 1.2 | **Análise** |  | 2d | 2018-09-04 09:00 A | 2018-09-05 18:00 |  | 63% | 0.73d |  | 2017-05-17 13:33 | 2017-05-18 17:22 | 1.48d |  |  |  | 30.11h | 18.78h | 4,516.16 | 6,900 | 2,816.55 |
| 16 | 1.2.1 | **Documento de requisitos** |  | 2d | 2018-09-04 09:00 A | 2018-09-05 18:00 |  | 79% | 0.41d |  | 2017-05-17 13:33 | 2017-05-18 11:49 | 0.91d |  |  |  | 20.88h | 17.28h | 3,131.54 | 4,350 | 2,591.54 |
| 17 | 1.2.1.1 | Reunir-se com o cliente |  | 0.38d | 2018-09-04 09:00 A | 2018-09-06 10:12 | 14 | 27% | 0.28d |  | 2017-05-17 13:33 | 2017-05-17 15:36 | 0.26d | 336.36d |  | Rodrigo; Kevin; Lucas; Thiago | 6h | 2.4h | 900 | 1,200 | 360 |
| 18 | 1.2.1.2 | Elaborar DRE |  | 0.62d | 2018-09-04 09:00 A | 2018-09-06 11:00 A | 17 | 100% |  |  | 2017-05-17 15:36 | 2017-05-17 17:36 | 0.25d |  |  | Lucas; Kevin; Rodrigo; Thiago | 10h | 10h | 1,500 | 1,500 | 1,500 |
| 19 | 1.2.1.3 | Revisar DRE |  | 0.19d | 2018-09-04 09:00 A | 2018-09-05 18:00 A | 18 | 100% |  |  | 2017-05-17 17:36 | 2017-05-18 10:09 | 0.32d |  |  | Rodrigo; Kevin; Lucas; Thiago | 3.1h | 3.1h | 465.07 | 900 | 465.07 |
| 20 | 1.2.1.4 | Submeter DRE para aprovação do cliente |  | 0.14d | 2018-09-04 09:00 A | 2019-12-19 16:11 A | 19 | 100% |  |  | 2017-05-18 10:09 | 2017-05-18 11:49 | 0.21d |  |  | Kevin; Lucas; Thiago; Rodrigo | 1.78h | 1.78h | 266.47 | 750 | 266.47 |
| 21 | 1.2.2 | **Matriz de rastreabilidade Bidirecional** |  | 1d | 2018-09-05 09:00 A | 2018-09-05 18:00 |  | 14% | 0.86d |  | 2017-05-18 11:49 | 2017-05-18 17:22 | 0.57d |  |  |  | 9.23h | 1.5h | 1,384.62 | 2,550 | 225.01 |
| 22 | 1.2.2.1 | Elaborar MRB |  | 0.38d | 2018-09-05 09:00 A | 2019-12-20 09:21 | 20 | 17% | 0.32d |  | 2017-05-18 11:49 | 2017-05-18 15:58 | 0.39d | 0d | finish no earlier than 2018-09-05 18:00 | Kevin; Lucas; Rodrigo; Thiago | 8h | 1.5h | 1,200 | 1,500 | 225.01 |
| 23 | 1.2.2.2 | Revisar MRB |  | 0.06d | 2019-12-20 09:21 | 2019-12-20 09:49 | 22 |  |  |  | 2017-05-18 15:58 | 2017-05-18 17:22 | 0.17d | 0d | finish no earlier than 2018-09-05 18:00 | Rodrigo; Kevin; Lucas; Thiago | 1.23h |  | 184.62 | 1,050 |  |
| 24 | 1.3 | **Projeto** |  | 0.4d? | 2019-12-20 09:49 | 2019-12-20 14:03 |  |  |  |  | 2017-05-18 17:22 | 2017-05-19 11:08 | 0.35d? | 0d |  |  | 10.67h |  | 1,927.5 | 1,410 |  |
| 25 | 1.3.1 | **Diagrama de Classes** |  | 0.13d? | 2019-12-20 09:49 | 2019-12-20 10:50 |  |  |  |  | 2017-05-18 17:22 | 2017-05-19 10:00 | 0.2d? | 0d |  |  | 4.83h |  | 877.5 | 780 |  |
| 26 | 1.3.1.1 | Elaborar Diagrama de Classes |  | 0.07d? | 2019-12-20 09:49 | 2019-12-20 10:25 | 23 |  |  |  | 2017-05-18 17:22 | 2017-05-19 09:10 | 0.12d? | 0d |  | Lucas; Adler; Kevin; Rodrigo; Thiago | 3h |  | 540 | 480 |  |
| 27 | 1.3.1.2 | Revisar Diagrama de Classes |  | 0.03d? | 2019-12-20 10:25 | 2019-12-20 10:40 | 26 |  |  |  | 2017-05-19 09:10 | 2017-05-19 09:40 | 0.06d? | 0d |  | Kevin; Thiago; Lucas; Adler; Rodrigo | 1h |  | 187.5 | 150 |  |
| 28 | 1.3.1.3 | Atualizar MRB |  | 0.02d? | 2019-12-20 10:40 | 2019-12-20 10:50 | 27 |  |  |  | 2017-05-19 09:40 | 2017-05-19 10:00 | 0.04d? | 0d |  | Lucas; Rodrigo; Adler; Kevin; Thiago | 0.83h |  | 150 | 150 |  |

| ID | WBS | Task | Type | Duration | Start | Finish | Predecessors | Complete | Actual finish | Baseline start | Baseline finish | Baseline duration | Total slack | Free slack | Constraint | Resources | Work | Actual work | Cost | Baseline cost | Actual cost |
| --- | --- | --- | --- | --- | --- | --- | --- | --- | --- | --- | --- | --- | --- | --- | --- | --- | --- | --- | --- | --- | --- |
| 29 | 1.3.2 | **Modelo Entidade Relacionamento** |  | 0.28d? | 2019-12-20 10:50 | 2019-12-20 14:03 |  |  |  | 2017-05-19 10:00 | 2017-05-19 11:08 | 0.14d? | 0d |  |  |  | 5.83h |  | 1,050 | 630 |  |
| 30 | 1.3.2.1 | Elaborar MER |  | 0.12d? | 2019-12-20 10:50 | 2019-12-20 11:50 | 28 |  |  | 2017-05-19 10:00 | 2017-05-19 10:48 | 0.1d? | 0d |  |  | Rodrigo; Lucas; Adler; Kevin; Thiago | 5h |  | 900 | 480 |  |
| 31 | 1.3.2.2 | Revisar MER |  | 0.02d? | 2019-12-20 11:50 | 2019-12-20 14:03 | 30 |  |  | 2017-05-19 10:48 | 2017-05-19 11:08 | 0.04d? | 0d |  |  | Lucas; Rodrigo; Adler; Kevin; Thiago | 0.83h |  | 150 | 150 |  |
| 32 | 1.4 | **Planejamento** |  | 1d | 2018-09-06 09:00 A | 2018-09-06 18:00 A |  | 100% |  | 2017-05-19 11:08 | 2017-05-19 17:26 | 0.66d? |  |  |  |  | 9.1h | 9.1h | 1,365 | 2,700 | 1,365 |
| 33 | 1.4.1 | **Estimativa de Tamanho Definitivo** |  | 1d | 2018-09-06 09:00 A | 2018-09-06 18:00 A |  | 100% |  | 2017-05-19 11:08 | 2017-05-19 14:48 | 0.33d? |  |  |  |  | 2.73h | 2.73h | 410 | 1,050 | 410 |
| 34 | 1.4.1.1 | Elaborar Estimativa de Tamanho Definitiva |  | 0.1d? | 2018-09-06 09:00 A | 2018-09-06 18:00 A | 31 | 100% |  | 2017-05-19 11:08 | 2017-05-19 14:08 | 0.14d? |  |  |  | Kevin; Lucas; Rodrigo | 2.4h | 2.4h | 360 | 750 | 360 |
| 35 | 1.4.1.2 | Revisar Estimativa de Tamanho Definitiva |  | 0.04d? | 2018-09-06 09:00 A | 2018-09-06 18:00 A | 34 | 100% |  | 2017-05-19 14:08 | 2017-05-19 14:48 | 0.08d? |  |  |  | Lucas | 0.33h | 0.33h | 50 | 300 | 50 |
| 36 | 1.4.2 | **Cronograma Definitivo** |  | 0.4d? | 2018-09-06 09:00 A | 2018-09-06 13:12 |  | 100% | 2018-09-06 10:00 | 2017-05-19 14:48 | 2017-05-19 16:30 | 0.21d? |  |  |  |  | 5h | 5h | 750 | 1,050 | 750 |
| 37 | 1.4.2.1 | Elabora Cronograma Definitivo |  | 0.12d? | 2018-09-06 09:00 A | 2018-09-06 10:00 A | 35 | 100% |  | 2017-05-19 14:48 | 2017-05-19 16:00 | 0.15d? |  |  |  | Kevin; Lucas; Rodrigo | 3h | 3h | 450 | 900 | 450 |
| 38 | 1.4.2.2 | Revisar Cronograma Definitivo |  | 0.12d? | 2018-09-06 09:00 A | 2018-09-06 10:00 A | 37 | 100% |  | 2017-05-19 16:00 | 2017-05-19 16:30 | 0.06d? |  |  |  | Kevin; Rodrigo | 2h | 2h | 300 | 150 | 300 |
| 39 | 1.4.3 | **Estimativa de Custo Definitiva** |  | 0.12d | 2018-09-06 09:00 A | 2018-09-06 10:00 A |  | 100% |  | 2017-05-19 16:30 | 2017-05-19 17:26 | 0.12d? |  |  |  |  | 1.37h | 1.37h | 205 | 600 | 205 |
| 40 | 1.4.3.1 | Elaborar Estimativa de Custo Definitiva |  | 0.05d? | 2018-09-06 09:00 A | 2018-09-06 10:00 A | 38 | 100% |  | 2017-05-19 16:30 | 2017-05-19 17:06 | 0.07d? |  |  |  | Kevin; Lucas; Rodrigo | 1.2h | 1.2h | 180 | 450 | 180 |
| 41 | 1.4.3.2 | Revisar Estimativa de Custo Definitiva |  | 0.02d? | 2018-09-06 09:00 A | 2018-09-06 09:10 A | 40 | 100% |  | 2017-05-19 17:06 | 2017-05-19 17:26 | 0.04d? |  |  |  | Lucas; Thiago | 0.17h | 0.17h | 25 | 150 | 25 |
| 42 | 1.4.3.3 | Submeter Estimativa de Custo e Tamanho para aprovação do cliente | milestone | 0d? | 2018-09-06 09:00 A | 2018-09-06 09:00 A | 41 | 100% |  | 2017-05-19 17:26 | 2017-05-19 17:26 | 0d? |  |  |  | Kevin; Thiago |  |  |  |  |  |
| 43 | 1.5 | **Implementação** |  | 17d | 2018-09-07 09:00 | 2018-10-01 18:00 |  |  |  | 2017-05-19 17:26 | 2017-06-12 18:00 | 16.07d |  |  |  |  | 96.04h |  | 14,406.01 | 23,250 |  |
| 44 | 1.5.1 | **Release 01** |  | 1.32d | 2018-09-07 09:00 | 2018-09-10 11:32 |  |  |  | 2017-05-19 17:26 | 2017-05-22 16:02 | 0.82d |  |  |  |  | 12.73h |  | 1,909 | 4,200 |  |
| 45 | 1.5.1.1 | **Implementação** |  | 0.68d? | 2018-09-07 09:00 | 2018-09-07 15:27 |  |  |  | 2017-05-19 17:26 | 2017-05-22 16:02 | 0.82d |  |  |  |  | 12.73h |  | 1,909 | 4,200 |  |
| 46 | 1.5.1.1.1 | **[RFC01] Manter Usuário** |  | 0.68d? | 2018-09-07 09:00 | 2018-09-07 15:27 |  |  |  | 2017-05-19 17:26 | 2017-05-22 11:14 | 0.47d |  |  |  |  | 12.73h |  | 1,909 | 2,100 |  |
| 47 | 1.5.1.1.1.1 | [RFS01] Cadastrar Usuário |  | 0.38d? | 2018-09-07 09:00 | 2018-09-07 12:00 | 42 |  |  |  |  |  | 327.76d | 0d | start no earlier than 2018-09-07 09:00 | Kevin; Lucas; Rodrigo; Thiago | 9h |  | 1,350 |  |  |
| 48 | 1.5.1.1.1.2 | [RFS02] Alterar Dados do Perfil de Cliente |  | 0.1d? | 2018-09-07 12:00 | 2018-09-07 14:24 | 47 |  |  |  |  |  | 327.64d | 0d | start no earlier than 2018-09-07 09:00 | Kevin; Lucas; Rodrigo; Thiago | 1.2h |  | 180 |  |  |
| 49 | 1.5.1.1.1.3 | [RFS03] Requisição de perfil profissional |  | 0.05d? | 2018-09-07 14:24 | 2018-09-07 14:48 | 48 |  |  |  |  |  | 327.64d | 0d | start no earlier than 2018-09-07 09:00 | Kevin; Lucas; Rodrigo; Thiago | 1.2h |  | 180 |  |  |
| 50 | 1.5.1.1.1.4 | [RFS04] Lista de requisições para perfil profissional |  | 0.06d? | 2018-09-07 14:48 | 2018-09-07 15:15 | 49 |  |  |  |  |  | 327.64d | 0d | start no earlier than 2018-09-07 09:00 | Rodrigo; Kevin; Lucas; Thiago | 0.73h |  | 109 |  |  |
| 51 | 1.5.1.1.1.5 | [RFS05] Análise de requisição de perfil profissional |  | 0.03d? | 2018-09-07 15:15 | 2018-09-07 15:27 | 50 |  |  |  |  |  | 327.64d | 0d | start no earlier than 2018-09-07 09:00 | Kevin; Lucas; Rodrigo; Thiago | 0.6h |  | 90 |  |  |
| 52 | 1.5.2 | **Teste Release 01** |  | 0.03d | 2018-09-07 15:15 | 2018-09-07 15:27 |  |  |  | 2017-05-22 16:02 | 2017-05-23 09:12 | 0.27d |  |  |  |  | 11.35h |  | 1,702.01 | 1,200 |  |
| 53 | 1.5.2.1 | **[RFC01] Manter Usuário** |  | 0.03d | 2018-09-07 15:15 | 2018-09-07 15:27 |  |  |  |  |  |  |  |  |  |  | 11.35h |  | 1,702.01 |  |  |
| 54 | 1.5.2.1.1 | [RFS01] Cadastrar Usuário |  | 0.01d? | 2018-09-07 15:27 | 2018-09-07 15:33 | 51 |  |  |  |  |  | 327.64d | 0d |  | Kevin; Lucas; Rodrigo; Thiago | 0.29h |  | 44.23 |  |  |
| 55 | 1.5.2.1.2 | [RFS02] Alterar Dados do Perfil de Cliente |  | 0.01d? | 2018-09-07 15:33 | 2018-09-07 15:39 | 54 |  |  |  |  |  | 327.64d | 0d |  | Kevin; Lucas; Rodrigo; Thiago | 0.29h |  | 44.23 |  |  |
| 56 | 1.5.2.1.3 | [RFS03] Requisição de perfil profissional |  | 0.01d? | 2018-09-07 15:39 | 2018-09-07 15:45 | 55 |  |  |  |  |  | 327.64d | 0d |  | Rodrigo; Kevin; Lucas; Thiago | 0.29h |  | 44.23 |  |  |
| 57 | 1.5.2.1.4 | [RFS04] Lista de requisições para perfil profissional |  | 0.01d? | 2018-09-07 15:45 | 2018-09-07 15:52 | 56 |  |  |  |  |  | 327.64d | 0d |  | Kevin; Lucas; Rodrigo; Thiago | 0.29h |  | 44.23 |  |  |

| ID | WBS | Task | Type | Duration | Start | Finish | Predecessors | Baseline start | Baseline finish | Baseline duration | Total slack | Free slack | Resources | Work | Cost | Baseline cost |
| --- | --- | --- | --- | --- | --- | --- | --- | --- | --- | --- | --- | --- | --- | --- | --- | --- |
| 58 | 1.5.2.1.5 | **[RFS05] Análise de requisição de perfil profissional** |  | 0.01d | 2018-09-07 15:46 | 2018-09-07 15:52 | 57 | 2017-05-23 09:12 | 2017-05-23 16:48 | 0.82d |  |  |  | 10.17h | 1,525.09 | 4,200 |
| 59 | 1.5.2.1.5.1 | **Implementação** |  | 0.49d? | 2018-09-07 15:46 | 2018-09-10 10:40 |  | 2017-05-23 09:12 | 2017-05-23 16:48 | 0.82d | 327.65d |  |  | 10.17h | 1,525.09 | 4,200 |
| 60 | 1.5.2.1.5.1.1 | **[RFC03] Manter Candidatos** |  | 0.26d? | 2018-09-07 15:46 | 2018-09-07 17:50 |  | 2017-05-23 09:12 | 2017-05-23 13:23 | 0.4d | 327.65d |  |  | 4.86h | 728.9 | 2,100 |
| 61 | 1.5.2.1.5.1.1.1 | [RFS09] Cadastrar Candidatos |  | 0.16d? | 2018-09-07 15:46 | 2018-09-07 17:01 |  |  |  |  | 327.65d | 0d | Rodrigo; Lucas | 2.5h | 375 |  |
| 62 | 1.5.2.1.5.1.1.2 | [RFS10] Visualizar Candidatos |  | 0.05d? | 2018-09-07 17:01 | 2018-09-07 17:25 | 61 |  |  |  | 327.65d | 0d | Kevin; Lucas; Rodrigo | 1.18h | 176.95 |  |
| 63 | 1.5.2.1.5.1.1.3 | [RFS11] Alterar Candidatos |  | 0.03d? | 2018-09-07 17:25 | 2018-09-07 17:37 | 62 |  |  |  | 327.65d | 0d | Kevin; Lucas; Rodrigo | 0.59h | 88.47 |  |
| 64 | 1.5.2.1.5.1.1.4 | [RFS12] Alterar Estatus do Candidato |  | 0.03d? | 2018-09-07 17:37 | 2018-09-07 17:50 | 63 |  |  |  | 327.65d | 0d | Rodrigo; Lucas; Kevin | 0.59h | 88.47 |  |
| 65 | 1.5.2.1.5.1.2 | **[RFC04] Manter Curriculum** |  | 0.23d? | 2018-09-07 17:50 | 2018-09-10 10:40 |  | 2017-05-23 13:23 | 2017-05-23 16:48 | 0.43d | 327.65d |  |  | 5.31h | 796.19 | 2,100 |
| 66 | 1.5.2.1.5.1.2.1 | [RFS21] Cadastrar Curriculum |  | 0.22d? | 2018-09-07 17:50 | 2018-09-10 09:51 | 64 |  |  |  | 327.65d | 0d | Lucas; Kevin; Rodrigo | 2.95h | 442.33 |  |
| 67 | 1.5.2.1.5.1.2.2 | [RFS22] Visualizar Curriculum |  | 0.05d? | 2018-09-10 09:51 | 2018-09-10 10:16 | 66 |  |  |  | 327.65d | 0d | Lucas; Kevin; Rodrigo | 1.18h | 176.93 |  |
| 68 | 1.5.2.1.5.1.2.3 | [RFS23] Alterar Curriculum |  | 0.03d? | 2018-09-10 10:16 | 2018-09-10 10:28 | 67 |  |  |  | 327.65d | 0d | Lucas; Kevin; Rodrigo | 0.59h | 88.47 |  |
| 69 | 1.5.2.1.5.1.2.4 | [RFS24] Inativar Curriculum |  | 0.03d? | 2018-09-10 10:28 | 2018-09-10 10:40 | 68 |  |  |  | 327.65d | 0.79d | Lucas; Kevin; Rodrigo | 0.59h | 88.47 |  |
| 70 | 1.5.3 | **Release 02** |  | 0.38d | 2018-09-10 09:00 | 2018-09-10 12:00 |  |  |  |  |  |  |  | 12h | 1,800 |  |
| 71 | 1.5.3.1 | **[RFC02] Manter Serviço Prestados no Calendário** |  | 0.38d | 2018-09-10 09:00 | 2018-09-10 12:00 |  |  |  |  |  |  |  | 12h | 1,800 |  |
| 72 | 1.5.3.1.1 | [RFS06] Cadastrar Serviço Prestados no Calendário | manual | 0.12d? | 2018-09-10 09:00 | 2018-09-10 10:00 | 58 |  |  |  |  |  | Kevin; Lucas; Rodrigo; Thiago | 4h | 600 |  |
| 73 | 1.5.3.1.2 | [RFS07] Consultar Serviço Prestados no Calendário | manual | 0.09d | 2018-09-10 09:00 | 2018-09-10 09:45 | 72 |  |  |  |  |  | Kevin; Lucas; Rodrigo; Thiago | 3h | 450 |  |
| 74 | 1.5.3.1.3 | [RFS08] Alterar Cadastro de Serviço Prestados no Calendário | manual | 0.09d | 2018-09-10 09:00 | 2018-09-10 09:45 | 73 |  |  |  |  |  | Kevin; Lucas; Rodrigo; Thiago | 3h | 450 |  |
| 75 | 1.5.3.1.4 | [RFS09] Alterar Cadastro de Serviço no Calendário | manual | 0.06d | 2018-09-10 09:00 | 2018-09-10 09:30 | 74 |  |  |  |  |  | Kevin; Lucas; Rodrigo; Thiago | 2h | 300 |  |
| 76 | 1.5.4 | **Teste Release 02** |  | 2d | 2018-09-11 09:00 | 2018-09-12 18:00 |  | 2017-05-23 16:48 | 2017-05-29 18:00 | 4.15d |  |  |  | 12h | 1,800 | 1,200 |
| 77 | 1.5.4.1 | **[RFC02] Manter Serviço Prestados no Calendário** |  | 0.62d? | 2018-09-11 09:00 | 2018-09-11 15:00 |  | 2017-05-23 16:48 | 2017-05-24 10:15 | 0.31d | 326.73d |  |  | 12h | 1,800 | 600 |
| 78 | 1.5.4.1.1 | [RFS06] Cadastrar Serviço Prestados no Calendário |  | 0.25d? | 2018-09-11 09:00 | 2018-09-11 11:00 | 69 |  |  |  | 326.86d | 0d | Kevin; Lucas; Rodrigo; Thiago | 6h | 900 |  |
| 79 | 1.5.4.1.2 | [RFS07] Consultar Serviço Prestados no Calendário |  | 0.08d? | 2018-09-11 11:00 | 2018-09-11 11:40 | 78 |  |  |  | 326.86d | 0d | Kevin; Lucas; Rodrigo; Thiago | 2h | 300 |  |
| 80 | 1.5.4.1.3 | [RFS08] Alterar Cadastro de Serviço Prestados no Calendário |  | 0.21d? | 2018-09-11 11:40 | 2018-09-11 14:40 | 79 |  |  |  | 326.73d | 0d | Rodrigo; Lucas; Kevin; Thiago | 3h | 450 |  |
| 81 | 1.5.4.1.4 | [RFS09] Alterar Cadastro de Serviço no Calendário |  | 0.04d? | 2018-09-11 14:40 | 2018-09-11 15:00 | 80 |  |  |  | 326.73d | 0.38d | Rodrigo; Lucas; Kevin; Thiago | 1h | 150 |  |

| ID | WBS | Task | Type | Duration | Start | Finish | Predecessors | Baseline start | Baseline finish | Baseline duration | Total slack | Free slack | Constraint | Resources | Work | Cost | Baseline cost |
| --- | --- | --- | --- | --- | --- | --- | --- | --- | --- | --- | --- | --- | --- | --- | --- | --- | --- |
| 82 | 1.5.5 | **Release 03** |  | 3d | 2018-09-12 09:00 | 2018-09-14 18:00 |  | 2017-05-30 08:00 | 2017-05-30 17:36 | 0.95d |  |  |  |  | 12h | 1,800 | 4,950 |
| 83 | 1.5.5.1 | **Implementação** |  | 3d | 2018-09-12 09:00 | 2018-09-14 18:00 |  | 2017-05-30 08:00 | 2017-05-30 17:36 | 0.95d |  |  |  |  | 12h | 1,800 | 4,950 |
| 84 | 1.5.5.1.1 | **[RFC03] Manter Serviço** |  | 0.23d? | 2018-09-12 09:00 | 2018-09-12 10:48 |  | 2017-05-30 08:00 | 2017-05-30 11:12 | 0.4d |  |  |  |  | 12h | 1,800 | 1,650 |
| 85 | 1.5.5.1.1.1 | [RFS10] Solicitar Serviço |  | 0.25d? | 2018-09-12 09:00 | 2018-09-12 11:00 | 81 |  |  |  | 326.36d | 0d |  | Rodrigo; Lucas; Kevin; Thiago | 6h | 900 |  |
| 86 | 1.5.5.1.1.2 | [RFS11] Alterar Serviço |  | 0.12d? | 2018-09-12 11:00 | 2018-09-12 12:00 | 85 |  |  |  | 326.48d | 0d |  | Kevin; Lucas; Rodrigo; Thiago | 3h | 450 |  |
| 87 | 1.5.5.1.1.3 | [RFS12] Pesquisar Serviço |  | 0.17d? | 2018-09-12 12:00 | 2018-09-12 14:40 | 86 |  |  |  | 326.36d | 0d |  | Lucas; Kevin; Rodrigo; Thiago | 2h | 300 |  |
| 88 | 1.5.5.1.1.4 | [RFS13] Cancelar Serviço |  | 0.04d? | 2018-09-12 14:40 | 2018-09-12 15:00 | 87 |  |  |  | 326.36d | 0.38d |  | Lucas; Kevin; Rodrigo; Thiago | 1h | 150 |  |
| 89 | 1.5.6 | **Teste Release 03** |  | 2d | 2018-09-13 09:00 | 2018-09-14 18:00 |  | 2017-05-30 17:36 | 2017-06-05 18:00 | 4.05d |  |  |  |  | 12h | 1,800 | 1,800 |
| 90 | 1.5.6.1 | **[RFC03] Manter Serviço** |  | 2d | 2018-09-13 09:00 | 2018-09-14 18:00 |  | 2017-05-30 17:36 | 2017-05-31 09:56 | 0.17d |  |  |  |  | 12h | 1,800 | 600 |
| 91 | 1.5.6.1.1 | [RFS10] Solicitar Serviço |  | 0.36d? | 2018-09-13 09:00 | 2018-09-13 11:51 | 88 |  |  |  | 325.89d | 0d |  | Rodrigo; Lucas; Kevin; Thiago | 6h | 900 |  |
| 92 | 1.5.6.1.2 | [RFS11] Alterar Serviço |  | 0.15d? | 2018-09-13 11:51 | 2018-09-13 14:34 | 91 |  |  |  | 325.77d | 0d |  | Kevin; Lucas; Rodrigo; Thiago | 2h | 300 |  |
| 93 | 1.5.6.1.3 | [RFS12] Pesquisar Serviço |  | 0.09d? | 2018-09-13 14:34 | 2018-09-13 15:16 | 92 |  |  |  | 325.77d | 0d |  | Lucas; Kevin; Rodrigo; Thiago | 2h | 300 |  |
| 94 | 1.5.6.1.4 | [RFS13] Cancelar Serviço |  | 0.09d? | 2018-09-13 15:16 | 2018-09-13 15:57 | 93 |  |  |  | 325.89d | 0.25d |  | Lucas; Kevin; Rodrigo; Thiago | 2h | 300 |  |
| 95 | 1.5.7 | **Release 04** |  | 2d | 2018-09-14 09:00 | 2018-09-17 18:00 |  | 2017-06-06 08:00 | 2017-06-06 15:00 | 0.62d |  |  |  |  | 10.97h | 1,645 | 4,500 |
| 96 | 1.5.7.1 | **Implementação** |  | 1.51d? | 2018-09-14 09:00 | 2018-09-17 14:06 |  | 2017-06-06 08:00 | 2017-06-06 15:00 | 0.62d |  |  |  |  | 10.97h | 1,645 | 4,500 |
| 97 | 1.5.7.1.1 | **[RFC04] Manter Avaliação** |  | 2d | 2018-09-14 09:00 | 2018-09-17 18:00 |  | 2017-06-06 08:00 | 2017-06-06 11:00 | 0.38d |  |  |  |  | 8.97h | 1,345 | 1,500 |
| 98 | 1.5.7.1.1.1 | [RFS14] Cadastrar Avaliação de Serviço |  | 0.38d? | 2018-09-14 09:00 | 2018-09-20 16:45 | 94 |  |  |  | 325.38d | 0d | start no earlier than 2018-09-14 09:00 | Kevin; Lucas; Rodrigo; Thiago | 3h | 450 |  |
| 99 | 1.5.7.1.1.2 | [RFS15] Alterar Avaliação de Serviço |  | 0.12d? | 2018-09-20 16:45 | 2018-09-20 17:45 | 98 |  |  |  | 325.38d | 0d | start no earlier than 2018-09-14 09:00 | Kevin; Lucas; Rodrigo; Thiago | 1h | 150 |  |
| 100 | 1.5.7.1.1.3 | [RFS16] Cadastrar Avaliação de Cliente |  | 0.03d? | 2018-09-20 17:45 | 2018-09-20 18:00 | 99 |  |  |  | 325.38d |  | finish no earlier than 2018-09-20 18:00 | Kevin; Lucas; Rodrigo; Thiago | 0.97h | 145 |  |
| 101 | 1.5.7.1.1.4 | [RFS17] Alterar Avaliação de Cliente |  | 0.09d? | 2018-09-20 09:00 | 2018-09-20 09:45 |  |  |  |  | 318.99d | 0d | start no earlier than 2018-09-20 09:00 | Kevin; Lucas; Rodrigo; Thiago | 3h | 450 |  |
| 102 | 1.5.7.1.1.5 | [RFS18] Remover Avaliação | manual | 1d | 2018-09-20 09:00 | 2018-09-20 18:00 | 101 |  |  |  |  |  |  | Kevin; Lucas; Rodrigo; Thiago | 1h | 150 |  |
| 103 | 1.5.7.1.2 | **[RFC05] Emitir Relatório de Taxa de Serviços Realizados** |  | 1.12d | 2018-09-21 08:00 | 2018-09-21 18:00 |  | 2017-06-06 11:00 | 2017-06-06 15:00 | 0.38d |  |  |  |  | 2h | 300 | 1,500 |
| 104 | 1.5.7.1.2.1 | [RFC05] Emitir Relatório de Taxa de Serviços Realizados |  | 5.24d? | 2018-09-21 08:00 | 2018-09-28 10:53 | 102 | 2017-06-06 11:00 | 2017-06-06 15:00 | 0.38d | 319.09d | 0d | finish no earlier than 2018-09-24 18:00 | Kevin; Lucas; Rodrigo; Thiago | 2h | 300 | 1,500 |
| 105 | 1.5.8 | **Teste Release 04** |  | 0.5d? | 2018-09-28 10:54 | 2018-09-28 15:54 |  | 2017-06-06 15:00 | 2017-06-12 18:00 | 4.38d |  |  |  |  | 13h | 1,950 | 1,200 |
| 106 | 1.5.8.1 | **[RFC04] Manter Avaliação** |  | 0.76d | 2018-09-28 10:53 | 2018-09-28 18:00 |  | 2017-06-06 15:00 | 2017-06-06 17:00 | 0.25d |  |  |  |  | 12h | 1,800 | 600 |
| 107 | 1.5.8.1.1 | [RFS14] Cadastrar Avaliação de Serviço |  | 0.27d? | 2018-09-28 10:53 | 2018-09-28 14:25 | 104 |  |  |  | 319.57d | 0d |  | Kevin; Lucas; Rodrigo; Thiago | 5h | 750 |  |
| 108 | 1.5.8.1.2 | [RFS15] Alterar Avaliação de Serviço |  | 0.13d? | 2018-09-28 14:25 | 2018-09-28 15:27 | 107 |  |  |  | 319.57d | 0d |  | Kevin; Lucas; Rodrigo; Thiago | 3h | 450 |  |
| 109 | 1.5.8.1.3 | [RFS16] Cadastrar Avaliação de Cliente |  | 0.09d? | 2018-09-28 15:27 | 2018-09-28 16:09 | 108 |  |  |  | 319.57d | 0d |  | Lucas; Kevin; Rodrigo; Thiago | 2h | 300 |  |
| 110 | 1.5.8.1.4 | [RFS17] Alterar Avaliação de Cliente |  | 0.04d? | 2018-09-28 16:09 | 2018-09-28 16:30 | 109 |  |  |  | 319.57d | 0.04d |  | Lucas; Kevin; Rodrigo; Thiago | 1h | 150 |  |
| 111 | 1.5.8.1.5 | [RFS18] Remover Avaliação | manual | 0.04d | 2018-09-28 16:48 | 2018-09-28 17:09 | 110 |  |  |  |  |  |  | Lucas; Kevin; Rodrigo; Thiago | 1h | 150 |  |

| ID | WBS | Task | Duration | Start | Finish | Predecessors | Baseline start | Baseline finish | Baseline duration | Total slack | Free slack | Constraint | Resources | Work | Cost | Baseline cost |
| --- | --- | --- | --- | --- | --- | --- | --- | --- | --- | --- | --- | --- | --- | --- | --- | --- |
| 112 | 1.5.8.2 | **[RFC05] Emitir Relatório de Taxa de Serviços Realizados** | 0.12d? | 2018-09-28 10:54 | 2018-09-28 11:54 |  | 2017-06-12 16:24 | 2017-06-12 18:00 | 0.2d | 319.09d | 0.64d |  |  | 1h | 150 | 600 |
| 113 | 1.5.8.2.1 | [RFC05] Emitir Relatório de Taxa de Serviços Realizados | 0.12d? | 2018-09-28 10:54 | 2018-09-28 11:54 | 104 |  |  |  | 319.09d | 0.64d |  | Lucas; Kevin; Rodrigo; Thiago | 1h | 150 |  |
| 114 | 1.6 | **Monitoramento e Controle** | 1d | 2018-10-01 09:00 | 2018-10-01 18:00 |  | 2017-05-15 09:00 | 2017-05-15 16:13 | 0.78d |  |  |  |  | 4h | 1,200 | 3,000 |
| 115 | 1.6.1 | Acompanhar Projeto | 0.5d | 2018-10-01 09:00 | 2018-10-01 14:00 | 113 | 2017-05-15 09:00 | 2017-05-15 16:13 | 0.78d | 319.01d |  | start no earlier than 2018-10-01 09:00 | Adler | 4h | 1,200 | 3,000 |
| 116 | 1.7 | **Fechamento** | 0.6d? | 2018-10-01 09:00 | 2018-10-01 14:48 |  | 2017-06-13 08:00 | 2017-06-13 13:48 | 0.47d? |  |  |  |  | 17h | 2,550 | 3,200 |
| 117 | 1.7.1 | Realizar Revisão Total do Sistema | 0.62d? | 2018-10-01 09:00 | 2018-10-01 15:00 | 112 | 2017-06-13 08:00 | 2017-06-13 13:48 | 0.6d? | 318.45d | 3.21d | start no earlier than 2018-10-01 09:00 | Kevin; Lucas; Rodrigo; Thiago | 17h | 2,550 | 3,200 |
| 118 | 1.8 | **Controle de Mudanças** | 4d | 2018-10-01 09:00 | 2018-10-04 18:00 |  | 2017-06-13 13:48 | 2017-06-13 16:10 | 0.3d? |  |  |  |  | 6h | 900 | 1,365 |
| 119 | 1.8.1 | Elaboração Documentação necessária para mudanças | 0.17d? | 2018-10-04 16:40 | 2018-10-04 18:00 | 117 | 2017-06-13 13:48 | 2017-06-13 15:13 | 0.18d? | 315.24d | 0d | finish no earlier than 2018-10-04 18:00 | Kevin; Lucas; Rodrigo | 4h | 600 | 915 |
| 120 | 1.8.2 | Revisar Documentação | 0.18d? | 2018-10-05 08:00 | 2018-10-05 09:25 | 119 | 2017-06-13 15:13 | 2017-06-13 16:10 | 0.12d? | 315.24d |  | finish no earlier than 2018-10-04 18:00 | Rodrigo; Lucas; Kevin | 2h | 300 | 450 |
